# Dynaslope2018

Schedule from MS Project XML, 2018-02-09 to 2018-09-05.

## Calendars

- Standard[Imported][Imported][Imported]: Mon-Fri 08:00-12:00, 13:00-17:00; Sat-Sun off. Exceptions (off unless hours are given): 2018-02-13, 2018-03-02 to 2018-03-06, 2018-03-26 to 2018-03-27, 2018-03-30 to 2018-04-03, 2018-04-06, 2018-04-28, 2018-05-04 to 2018-05-08, 2018-06-01 to 2018-06-04, 2018-06-09, 2018-06-29 to 2018-07-03, 2018-08-03 to 2018-08-07, 2018-08-18, 2018-08-24, 2018-08-31 to 2018-09-04.

## Resources

| Resource |
| --- |
| Unassigned |
| geotech 1 |
| geotech 2 |
| geotech 3 |
| geol 2 |
| Surveyor 1 |
| geol 8 |
| geol 7 |
| geol 6 |
| geol 1 |
| geol 3 |
| geol 4 |
| geol 5 |
| data scientist 6 |
| data scientist 8 |
| data scientist 1 |
| data scientist 2 |
| data scientist 3 |
| data scientist 4 |
| data scientist 5 |
| data scientist 7 |
| social scientist 3 |
| social scientist 4 |
| social scientist 1 |
| social scientist 2 |
| emb engr 2 |
| DRRS 2 |
| DRRS 1 |
| emb engr 6 |
| comm res 1 |
| comm res 2 |
| sys ad 2 |
| full stack dev 2 |
| eletech |
| full stack dev 5 |
| full stack dev 4 |
| full stack dev 3 |
| full stack dev 2 |
| full stack dev 1 |
| programmer 3 |
| comm dev |
| emb engr 8 |
| emb engr 1 |
| emb engr 3 |
| emb engr 4 |
| emb engr 5 |
| emb engr 7 |
| MEAL officer 2 |
| sys ad 1 |
| MEAL officer 5 |
| programmer 5 |
| programmer 6 |
| programmer 1 |
| programmer 2 |
| programmer 4 |
| MEAL staff 4 |
| analyst 1 |
| analyst 2 |
| analyst 3 |
| analyst 4 |
| MEAL staff 9 |
| MEAL officer 1 |
| MEAL officer 3 |
| MEAL officer 4 |
| MEAL officer 6 |
| comm dev 4 |
| MEAL staff 1 |
| MEAL staff 2 |
| MEAL staff 3 |
| MEAL staff 5 |
| MEAL staff 6 |
| MEAL staff 7 |
| MEAL staff 8 |
| MEAL staff 10 |
| MEAL staff 11 |
| MEAL staff 12 |
| comm dev 1 |
| comm dev 2 |
| comm dev 3 |
| training specialist 3 |
| facilitator 1 |
| facilitator 2 |
| facilitator 3 |
| technical writer 2 |
| monitoringPersonnel40+ |
| eletech 1 |
| eletech 2 |
| eletech 3 |
| eletech 4 |
| eletech 5 |
| training specialist |
| training specialist 1 |
| training specialist 2 |
| training specialist 4 |
| MEAL expert |
| technical writer |
| technical writer 1 |
| technical writer 3 |
| report reviewer |
| report reviewer 1 |
| report reviewer 2 |
| report reviewer 3 |

## Schedule

| ID | WBS | Task | Duration | Start | Finish | Predecessors | Total slack | Constraint | Resources |
| --- | --- | --- | --- | --- | --- | --- | --- | --- | --- |
| 1 | 1 | **Landslide risk information** | 69d? | 2018-05-18 | 2018-09-05 |  |  |  |  |
| 2 | 1.1 | **methods report (Hazards)** | 44d? | 2018-06-27 | 2018-09-05 |  |  |  |  |
| 3 | 1.1.1 | MoMs | 1d? | 2018-09-05 | 2018-09-05 |  | 12500d | as late as possible |  |
| 4 | 1.1.2 | study surficial displacement behaviour | 1d? | 2018-09-05 | 2018-09-05 |  | 12500d | as late as possible |  |
| 5 | 1.1.3 | **slope stability models (FEM)** | 42d | 2018-07-04 | 2018-09-05 |  |  |  |  |
| 6 | 1.1.3.1 | review related literature | 7d | 2018-07-04 | 2018-07-12 |  | 8600d | as late as possible | geotech 1 |
| 7 | 1.1.3.2 | develop prototype | 5d | 2018-07-13 | 2018-07-19 | 6 |  | as late as possible | geotech 1 |
| 8 | 1.1.3.3 | test model with monitoring data | 14d | 2018-07-20 | 2018-08-08 | 7 |  | as late as possible | geotech 1 |
| 9 | 1.1.3.4 | field data gathering | 6d | 2018-08-09 | 2018-08-16 | 7, 8 |  | as late as possible | geol 1 |
| 10 | 1.1.3.5 | field data gathering | 6d | 2018-08-09 | 2018-08-16 | 7, 8 |  | as late as possible | geotech 1 |
| 11 | 1.1.3.6 | evaluate model (report as PI of slope stab model) | 4d | 2018-08-17 | 2018-08-22 | 8, 9, 10 |  | as late as possible | geotech 1 |
| 12 | 1.1.3.7 | write report | 5d | 2018-08-23 | 2018-08-29 | 11 |  | as late as possible | geotech 1 |
| 13 | 1.1.3.8 | develop training materials | 3d | 2018-08-30 | 2018-09-03 | 12 |  | as late as possible | geotech 1 |
| 14 | 1.1.3.9 | conduct training | 2d | 2018-09-04 | 2018-09-05 | 13 |  | as late as possible | geotech 1 |
| 15 | 1.1.4 | **slope stability models (LEM1)** | 37d | 2018-07-11 | 2018-09-05 |  |  |  |  |
| 16 | 1.1.4.1 | review related literature | 5d | 2018-07-11 | 2018-07-17 |  | 9100d | as late as possible | geotech 2 |
| 17 | 1.1.4.2 | develop prototype | 5d | 2018-07-18 | 2018-07-24 | 16 |  | as late as possible | geotech 2 |
| 18 | 1.1.4.3 | test model with monitoring data | 5d | 2018-07-25 | 2018-07-31 | 17, 216 |  | as late as possible | geotech 2 |
| 19 | 1.1.4.4 | field data gathering | 13d | 2018-08-01 | 2018-08-17 | 17, 18 |  | as late as possible | geol 2 |
| 20 | 1.1.4.5 | field data gathering | 13d | 2018-08-01 | 2018-08-17 | 17, 18 |  | as late as possible | geotech 2 |
| 21 | 1.1.4.6 | evaluate model (report as PI of slope stab model) | 3d | 2018-08-20 | 2018-08-22 | 18, 19, 20 |  | as late as possible | geotech 2 |
| 22 | 1.1.4.7 | write report | 5d | 2018-08-23 | 2018-08-29 | 21 |  | as late as possible | geotech 2 |
| 23 | 1.1.4.8 | develop training materials | 3d | 2018-08-30 | 2018-09-03 | 22 |  | as late as possible | geotech 2 |
| 24 | 1.1.4.9 | conduct training | 2d | 2018-09-04 | 2018-09-05 | 23 |  | as late as possible | geotech 2 |

| ID | WBS | Task | Duration | Start | Finish | Predecessors | Total slack | Constraint | Resources |
| --- | --- | --- | --- | --- | --- | --- | --- | --- | --- |
| 25 | 1.1.5 | **slope stability models (LEM2)** | 37d | 2018-07-11 | 2018-09-05 |  |  |  |  |
| 26 | 1.1.5.1 | review related literature | 5d | 2018-07-11 | 2018-07-17 |  | 9100d | as late as possible | geotech 3 |
| 27 | 1.1.5.2 | develop prototype | 5d | 2018-07-18 | 2018-07-24 | 26 |  | as late as possible | geotech 3 |
| 28 | 1.1.5.3 | test model with monitoring data | 5d | 2018-07-25 | 2018-07-31 | 27, 216 |  | as late as possible | geotech 3 |
| 29 | 1.1.5.4 | field data gathering | 13d | 2018-08-01 | 2018-08-17 | 27, 28 |  | as late as possible | geol 3 |
| 30 | 1.1.5.5 | field data gathering | 13d | 2018-08-01 | 2018-08-17 | 27, 28 |  | as late as possible | geotech 3 |
| 31 | 1.1.5.6 | evaluate model (report as PI of slope stab model) | 3d | 2018-08-20 | 2018-08-22 | 28, 29, 30 |  | as late as possible | geotech 3 |
| 32 | 1.1.5.7 | write report | 5d | 2018-08-23 | 2018-08-29 | 31 |  | as late as possible | geotech 3 |
| 33 | 1.1.5.8 | develop training materials | 3d | 2018-08-30 | 2018-09-03 | 32 |  | as late as possible | geotech 3 |
| 34 | 1.1.5.9 | conduct training | 2d | 2018-09-04 | 2018-09-05 | 33 |  | as late as possible | geotech 3 |
| 35 | 1.1.6 | **runout model 1** | 32d | 2018-07-16 | 2018-09-05 |  |  |  |  |
| 36 | 1.1.6.1 | review related literature | 10d | 2018-07-16 | 2018-07-27 |  | 9300d | as late as possible |  |
| 37 | 1.1.6.2 | develop prototype | 10d | 2018-07-30 | 2018-08-10 | 36 |  | as late as possible | geol 4 |
| 38 | 1.1.6.3 | test model with monitoring data | 5d | 2018-08-13 | 2018-08-17 | 37, 216 |  | as late as possible | geol 4 |
| 39 | 1.1.6.4 | evaluate model (report as PI of runout model) | 3d | 2018-08-20 | 2018-08-22 | 38 |  | as late as possible | geol 4 |
| 40 | 1.1.6.5 | write report | 5d | 2018-08-23 | 2018-08-29 | 39 |  | as late as possible | geol 4 |
| 41 | 1.1.6.6 | develop training materials | 3d | 2018-08-30 | 2018-09-03 | 40 |  | as late as possible | geol 4 |
| 42 | 1.1.6.7 | conduct training | 2d | 2018-09-04 | 2018-09-05 | 41 |  | as late as possible | geol 4 |
| 43 | 1.1.7 | **runout model 2** | 27d | 2018-07-23 | 2018-09-05 |  |  |  |  |
| 44 | 1.1.7.1 | review related literature | 5d | 2018-07-23 | 2018-07-27 |  | 9900d | as late as possible |  |
| 45 | 1.1.7.2 | develop prototype | 10d | 2018-07-30 | 2018-08-10 | 44 |  | as late as possible | geol 5 |
| 46 | 1.1.7.3 | test model with monitoring data | 5d | 2018-08-13 | 2018-08-17 | 45, 216 |  | as late as possible | geol 5 |
| 47 | 1.1.7.4 | evaluate model (report as PI of runout model) | 3d | 2018-08-20 | 2018-08-22 | 46 |  | as late as possible | geol 5 |
| 48 | 1.1.7.5 | write report | 5d | 2018-08-23 | 2018-08-29 | 47 |  | as late as possible | geol 5 |
| 49 | 1.1.7.6 | develop training materials | 3d | 2018-08-30 | 2018-09-03 | 48 |  | as late as possible | geol 5 |
| 50 | 1.1.7.7 | conduct training | 2d | 2018-09-04 | 2018-09-05 | 49 |  | as late as possible | geol 5 |

| ID | WBS | Task | Duration | Start | Finish | Predecessors | Total slack | Constraint | Resources |
| --- | --- | --- | --- | --- | --- | --- | --- | --- | --- |
| 51 | 1.1.8 | **threshold model 1** | 26d | 2018-06-27 | 2018-08-09 |  |  |  |  |
| 52 | 1.1.8.1 | review related literature | 5d | 2018-06-27 | 2018-07-03 |  | 8400d | as late as possible | data scientist 1 |
| 53 | 1.1.8.2 | develop prototype | 14d | 2018-07-04 | 2018-07-23 | 52 |  | as late as possible | data scientist 1 |
| 54 | 1.1.8.3 | implement model alongside operations | 6d | 2018-07-24 | 2018-07-31 | 53, 216 |  | as late as possible | data scientist 1 |
| 55 | 1.1.8.4 | evaluate model (report as PI of threshold model) | 1d | 2018-08-01 | 2018-08-01 | 54, 99 |  | as late as possible | data scientist 1 |
| 56 | 1.1.8.5 | write report | 4d | 2018-08-02 | 2018-08-07 | 55 |  | as late as possible | data scientist 1 |
| 57 | 1.1.8.6 | develop training materials | 1d | 2018-08-08 | 2018-08-08 | 56 |  | as late as possible | data scientist 1 |
| 58 | 1.1.8.7 | conduct training | 1d | 2018-08-09 | 2018-08-09 | 57 |  | as late as possible | data scientist 1 |
| 59 | 1.1.9 | **threshold model 2** | 26d | 2018-06-27 | 2018-08-09 |  |  |  |  |
| 60 | 1.1.9.1 | review related literature | 5d | 2018-06-27 | 2018-07-03 |  | 8400d | as late as possible | data scientist 2 |
| 61 | 1.1.9.2 | develop prototype | 14d | 2018-07-04 | 2018-07-23 | 60 |  | as late as possible | data scientist 2 |
| 62 | 1.1.9.3 | implement model alongside operations | 6d | 2018-07-24 | 2018-07-31 | 61, 216 |  | as late as possible | data scientist 2 |
| 63 | 1.1.9.4 | evaluate model (report as PI of threshold model) | 1d | 2018-08-01 | 2018-08-01 | 62, 99 |  | as late as possible | data scientist 2 |
| 64 | 1.1.9.5 | write report | 4d | 2018-08-02 | 2018-08-07 | 63 |  | as late as possible | data scientist 2 |
| 65 | 1.1.9.6 | develop training materials | 1d | 2018-08-08 | 2018-08-08 | 64 |  | as late as possible | data scientist 2 |
| 66 | 1.1.9.7 | conduct training | 1d | 2018-08-09 | 2018-08-09 | 65 |  | as late as possible | data scientist 2 |
| 67 | 1.1.10 | **threshold model 3** | 26d | 2018-06-27 | 2018-08-09 |  |  |  |  |
| 68 | 1.1.10.1 | review related literature | 5d | 2018-06-27 | 2018-07-03 |  | 8400d | as late as possible | data scientist 3 |
| 69 | 1.1.10.2 | develop prototype | 14d | 2018-07-04 | 2018-07-23 | 68 |  | as late as possible | data scientist 3 |
| 70 | 1.1.10.3 | implement model alongside operations | 6d | 2018-07-24 | 2018-07-31 | 69, 216 |  | as late as possible | data scientist 3 |
| 71 | 1.1.10.4 | evaluate model (report as PI of threshold model) | 1d | 2018-08-01 | 2018-08-01 | 70, 99 |  | as late as possible | data scientist 3 |
| 72 | 1.1.10.5 | write report | 4d | 2018-08-02 | 2018-08-07 | 71 |  | as late as possible | data scientist 3 |
| 73 | 1.1.10.6 | develop training materials | 1d | 2018-08-08 | 2018-08-08 | 72 |  | as late as possible | data scientist 3 |
| 74 | 1.1.10.7 | conduct training | 1d | 2018-08-09 | 2018-08-09 | 73 |  | as late as possible | data scientist 3 |

| ID | WBS | Task | Duration | Start | Finish | Predecessors | Total slack | Constraint | Resources |
| --- | --- | --- | --- | --- | --- | --- | --- | --- | --- |
| 75 | 1.1.11 | **threshold model 4** | 26d | 2018-06-27 | 2018-08-09 |  |  |  |  |
| 76 | 1.1.11.1 | review related literature | 5d | 2018-06-27 | 2018-07-03 |  | 8400d | as late as possible | data scientist 4 |
| 77 | 1.1.11.2 | develop prototype | 14d | 2018-07-04 | 2018-07-23 | 76 |  | as late as possible | data scientist 4 |
| 78 | 1.1.11.3 | implement model alongside operations | 6d | 2018-07-24 | 2018-07-31 | 216, 77 |  | as late as possible | data scientist 4 |
| 79 | 1.1.11.4 | evaluate model (report as PI of threshold model) | 1d | 2018-08-01 | 2018-08-01 | 99, 78 |  | as late as possible | data scientist 4 |
| 80 | 1.1.11.5 | write report | 4d | 2018-08-02 | 2018-08-07 | 79 |  | as late as possible | data scientist 4 |
| 81 | 1.1.11.6 | develop training materials | 1d | 2018-08-08 | 2018-08-08 | 80 |  | as late as possible | data scientist 4 |
| 82 | 1.1.11.7 | conduct training | 1d | 2018-08-09 | 2018-08-09 | 81 |  | as late as possible | data scientist 4 |
| 83 | 1.1.12 | **threshold model 5** | 26d | 2018-06-27 | 2018-08-09 |  |  |  |  |
| 84 | 1.1.12.1 | review related literature | 5d | 2018-06-27 | 2018-07-03 |  | 8400d | as late as possible | data scientist 5 |
| 85 | 1.1.12.2 | develop prototype | 14d | 2018-07-04 | 2018-07-23 | 84 |  | as late as possible | data scientist 5 |
| 86 | 1.1.12.3 | implement model alongside operations | 6d | 2018-07-24 | 2018-07-31 | 85, 216 |  | as late as possible | data scientist 5 |
| 87 | 1.1.12.4 | evaluate model (report as PI of threshold model) | 1d | 2018-08-01 | 2018-08-01 | 86, 99 |  | as late as possible | data scientist 5 |
| 88 | 1.1.12.5 | write report | 4d | 2018-08-02 | 2018-08-07 | 87 |  | as late as possible | data scientist 5 |
| 89 | 1.1.12.6 | develop training materials | 1d | 2018-08-08 | 2018-08-08 | 88 |  | as late as possible | data scientist 5 |
| 90 | 1.1.12.7 | conduct training | 1d | 2018-08-09 | 2018-08-09 | 89 |  | as late as possible | data scientist 5 |
| 91 | 1.1.13 | **threshold model 6** | 26d | 2018-06-27 | 2018-08-09 |  |  |  |  |
| 92 | 1.1.13.1 | review related literature | 5d | 2018-06-27 | 2018-07-03 |  | 8400d | as late as possible | data scientist 6 |
| 93 | 1.1.13.2 | develop prototype | 14d | 2018-07-04 | 2018-07-23 | 92 |  | as late as possible | data scientist 6 |
| 94 | 1.1.13.3 | implement model alongside operations | 6d | 2018-07-24 | 2018-07-31 | 93, 216 |  | as late as possible | data scientist 6 |
| 95 | 1.1.13.4 | evaluate model (report as PI of threshold model) | 1d | 2018-08-01 | 2018-08-01 | 94, 99 |  | as late as possible | data scientist 6 |
| 96 | 1.1.13.5 | write report | 4d | 2018-08-02 | 2018-08-07 | 95 |  | as late as possible | data scientist 6 |
| 97 | 1.1.13.6 | develop training materials | 1d | 2018-08-08 | 2018-08-08 | 96 |  | as late as possible | data scientist 6 |
| 98 | 1.1.13.7 | conduct training | 1d | 2018-08-09 | 2018-08-09 | 97 |  | as late as possible | data scientist 6 |
| 99 | 1.1.14 | develop threshold performance index | 12d | 2018-07-16 | 2018-07-31 |  | 9400d | as late as possible | data scientist 7 |

| ID | WBS | Task | Duration | Start | Finish | Predecessors | Total slack | Constraint | Resources |
| --- | --- | --- | --- | --- | --- | --- | --- | --- | --- |
| 100 | 1.2 | **methods report (C&V)** | 39d | 2018-07-03 | 2018-09-05 |  |  |  |  |
| 101 | 1.2.1 | **method 1** | 39d | 2018-07-03 | 2018-09-05 |  |  |  |  |
| 102 | 1.2.1.1 | evaluate C&V frameworks (explore REDAS as one of the frameworks/models) | 14d | 2018-07-03 | 2018-07-20 |  | 8500d | as late as possible | social scientist 1 |
| 103 | 1.2.1.2 | development of C&V assessment modules | 16d | 2018-07-23 | 2018-08-13 | 102 |  | as late as possible | social scientist 1 |
| 104 | 1.2.1.3 | recommend C&V info system | 5d | 2018-08-30 | 2018-09-05 | 103 | 900d | as late as possible | social scientist 1 |
| 105 | 1.2.1.4 | design database (linking to EWSL data storage and management)) | 5d | 2018-08-28 | 2018-09-03 | 102 | 2100d | as late as possible | social scientist 1 |
| 106 | 1.2.1.5 | write report | 2d | 2018-09-04 | 2018-09-05 | 105 |  | as late as possible | social scientist 1 |
| 107 | 1.2.1.6 | develop training materials | 12d | 2018-08-14 | 2018-08-29 | 103 |  | as late as possible | social scientist 1 |
| 108 | 1.2.1.7 | conduct training | 5d | 2018-08-30 | 2018-09-05 | 107 |  | as late as possible | social scientist 1 |
| 109 | 1.2.2 | **method 2** | 39d | 2018-07-03 | 2018-09-05 |  |  |  |  |
| 110 | 1.2.2.1 | evaluate C&V frameworks (explore REDAS as one of the frameworks/models) | 14d | 2018-07-03 | 2018-07-20 | 120 | 100d | as late as possible | social scientist 2 |
| 111 | 1.2.2.2 | development of C&V assessment modules | 16d | 2018-07-23 | 2018-08-13 | 110 |  | as late as possible | social scientist 2 |
| 112 | 1.2.2.3 | recommend C&V info system | 5d | 2018-08-30 | 2018-09-05 | 111 | 900d | as late as possible | social scientist 2 |
| 113 | 1.2.2.4 | design database (linking to EWSL data storage and management)) | 5d | 2018-08-28 | 2018-09-03 | 110 | 2100d | as late as possible | social scientist 2 |
| 114 | 1.2.2.5 | write report | 2d | 2018-09-04 | 2018-09-05 | 113 |  | as late as possible | social scientist 2 |
| 115 | 1.2.2.6 | develop training materials | 12d | 2018-08-14 | 2018-08-29 | 111 |  | as late as possible | social scientist 2 |
| 116 | 1.2.2.7 | conduct training | 5d | 2018-08-30 | 2018-09-05 | 115 |  | as late as possible | social scientist 2 |
| 117 | 1.3 | **methods report (Risk)** | 69d | 2018-05-18 | 2018-09-05 |  |  |  |  |
| 118 | 1.3.1 | evaluate frameworks for risk | 17d | 2018-05-18 | 2018-06-11 |  | 5700d | as late as possible | DRRS 1 |
| 119 | 1.3.2 | develop methods | 12d | 2018-06-12 | 2018-06-27 | 118 |  | as late as possible | DRRS 1 |
| 120 | 1.3.3 | write report | 2d | 2018-06-28 | 2018-06-29 | 119 |  | as late as possible | DRRS 1 |
| 121 | 1.3.4 | develop training materials | 10d | 2018-07-02 | 2018-07-13 | 120 |  | as late as possible | DRRS 1 |
| 122 | 1.3.5 | conduct training (NC 3) | 38d | 2018-07-16 | 2018-09-05 | 121 |  | as late as possible | DRRS 1 |
| 123 | 1.4 | **per site landslide risk reports (focus sites)** | 40d? | 2018-07-02 | 2018-09-05 |  |  |  |  |
| 124 | 1.4.1 | integration of hazard, capacity, and vulnerability information | 11d | 2018-08-22 | 2018-09-05 | 119, 133, 137 |  | as late as possible | DRRS 1 |

| ID | WBS | Task | Duration | Start | Finish | Predecessors | Total slack | Constraint | Resources |
| --- | --- | --- | --- | --- | --- | --- | --- | --- | --- |
| 125 | 1.4.2 | **per site hazard reports (all sites)** | 29d? | 2018-07-09 | 2018-08-21 |  |  |  |  |
| 126 | 1.4.2.1 | conduct fieldwork (resurvey) | 25d | 2018-07-09 | 2018-08-15 |  | 8800d | as late as possible |  |
| 127 | 1.4.2.2 | consolidate field notes | 1d? | 2018-08-16 | 2018-08-16 | 126 |  | as late as possible |  |
| 128 | 1.4.2.3 | review and identify active sites | 1d? | 2018-08-15 | 2018-08-15 |  | 11200d | as late as possible |  |
| 129 | 1.4.2.4 | conduct quarterly survey (RTS/RTK/remap) | 1d? | 2018-08-16 | 2018-08-16 | 128 |  | as late as possible |  |
| 130 | 1.4.2.5 | analyze monitoring data (requires access to database) | 1d? | 2018-08-17 | 2018-08-17 | 127, 129 |  | as late as possible |  |
| 131 | 1.4.2.6 | update volume, depth, extent (using current models) | 1d? | 2018-08-20 | 2018-08-20 | 130 |  | as late as possible |  |
| 132 | 1.4.2.7 | update thresholds with monitoring data and performance index | 1d? | 2018-08-20 | 2018-08-20 |  | 11500d | as late as possible |  |
| 133 | 1.4.2.8 | update per site hazard reports (updated maps as PI) | 1d? | 2018-08-21 | 2018-08-21 | 132, 131 |  | as late as possible |  |
| 134 | 1.4.3 | **per site capacity and vulnerability reports (2 focus sites, Mindanao)** | 32d | 2018-07-02 | 2018-08-21 |  |  |  |  |
| 135 | 1.4.3.1 | conduct data gathering | 12d | 2018-07-02 | 2018-07-17 |  | 8400d | as late as possible | social scientist 3 |
| 136 | 1.4.3.2 | analyze data | 20d | 2018-07-18 | 2018-08-14 | 135 |  | as late as possible | social scientist 3 |
| 137 | 1.4.3.3 | update per site capacity and vulnerability reports | 5d | 2018-08-15 | 2018-08-21 | 136 |  | as late as possible | social scientist 3 |
| 138 | 1.5 | **"Alert protocol" -- essentually how risk knowledge informs early warning practice** | 23d | 2018-07-17 | 2018-08-21 |  |  |  |  |
| 139 | 1.5.1 | review of related literature | 14d | 2018-07-17 | 2018-08-03 |  | 9500d | as late as possible | DRRS 2 |
| 140 | 1.5.2 | review and evaluate current alert protocol | 10d | 2018-08-06 | 2018-08-17 | 139 |  | as late as possible | DRRS 2 |
| 141 | 1.5.3 | recomend alert protocol | 2d | 2018-08-20 | 2018-08-21 | 140 |  | as late as possible | DRRS 2 |
| 142 | 2 | **Early warning system for landslides** | 126d? | 2018-02-09 | 2018-09-05 |  |  |  |  |
| 143 | 2.1 | **Data gathering system** | 126d | 2018-02-09 | 2018-09-05 |  |  |  |  |
| 144 | 2.1.1 | **community reported data** | 126d | 2018-02-09 | 2018-09-05 |  |  |  |  |
| 145 | 2.1.1.1 | provide initial performance metrics based on 2017 experience | 1d | 2018-02-09 | 2018-02-09 |  | 11100d |  |  |
| 146 | 2.1.1.2 | improve means of gathering surficial data (including transmission) | 37d | 2018-07-06 | 2018-09-05 | 260 | 3000d | as late as possible |  |
| 147 | 2.1.1.3 | develop on the ground validation of rainfall via sensors | 37d | 2018-07-06 | 2018-09-05 |  | 8800d | as late as possible |  |
| 148 | 2.1.2 | **tilt** | 126d | 2018-02-09 | 2018-09-05 |  |  |  |  |
| 149 | 2.1.2.1 | provide initial performance metrics based on 2017 experience | 1d | 2018-02-09 | 2018-02-09 |  | 11100d |  |  |
| 150 | 2.1.2.2 | characterize tilt sensor(angle range and accuracy of v3 tilt sensor) | 8d | 2018-02-09 | 2018-02-20 |  | 11700d |  | emb engr 1 |
| 151 | 2.1.2.3 | develop tilt sensor feature 1(improve angle range, accuracy,packaging,coms) | 20d | 2018-02-09 | 2018-03-14 |  | 10700d |  |  |
| 152 | 2.1.2.4 | develop tilt sensor feature 2(improve angle range, accuracy,packaging,coms) | 20d | 2018-02-09 | 2018-03-14 |  | 10700d |  |  |
| 153 | 2.1.2.5 | prepare manufacturing documents (project to phivolcs --admin heavy task ito) | 20d | 2018-02-09 | 2018-03-14 |  | 10700d |  |  |

Notes:
- 138: trigger to alert + alert to dissemination
- 143: every product should have performance metrics included in its PI PI should include documentation per product

| ID | WBS | Task | Duration | Start | Finish | Predecessors | Total slack | Constraint | Resources |
| --- | --- | --- | --- | --- | --- | --- | --- | --- | --- |
| 154 | 2.1.2.6 | **manufacturing monitoring** | 126d | 2018-02-09 | 2018-09-05 |  |  |  |  |
| 155 | 2.1.2.6.1 | develop functionality tests | 10d | 2018-02-09 | 2018-02-23 |  | -100d |  |  |
| 156 | 2.1.2.6.2 | manufacture | 105d | 2018-02-26 | 2018-08-17 | 155 | -100d |  |  |
| 157 | 2.1.2.6.3 | troubleshoot manufacturing issues | 105d | 2018-02-26 | 2018-08-17 | 155 | 1100d |  |  |
| 158 | 2.1.2.6.4 | evaluate sample boards | 10d | 2018-08-20 | 2018-09-05 | 156 |  |  |  |
| 159 | 2.1.2.7 | develop and implement filters | 8d | 2018-02-09 | 2018-02-21 |  | 11900d |  |  |
| 160 | 2.1.2.8 | deployment of new tilt sensors | 5d | 2018-02-09 | 2018-02-15 |  | 12300d |  |  |
| 161 | 2.1.3 | **soms** | 57d | 2018-02-09 | 2018-05-17 |  | 7000d |  |  |
| 162 | 2.1.3.1 | provide initial performance metrics based on 2017 experience | 1d | 2018-02-09 | 2018-02-09 |  | 11100d |  |  |
| 163 | 2.1.3.2 | soms characterization 1 (gravimetric site-specific) | 20d | 2018-02-09 | 2018-03-14 |  | 10700d |  |  |
| 164 | 2.1.3.3 | soms characterization 2 (borehole infiltration versus non-borehole infiltration) | 10d | 2018-02-09 | 2018-02-23 |  | 11600d |  |  |
| 165 | 2.1.3.4 | soms characterization 3 (rainfall-soil moisture correlation with visual water infiltration) | 5d | 2018-02-09 | 2018-02-15 |  | 12300d |  |  |
| 166 | 2.1.3.5 | improve soms probe and its orientation | 20d | 2018-02-09 | 2018-03-14 |  | 6800d |  |  |
| 167 | 2.1.3.6 | develop new soil moisture sensor (improve accuracy, packaging, coms) prototype | 20d | 2018-03-15 | 2018-04-19 | 166 | 7100d |  |  |
| 168 | 2.1.3.7 | deploy new soms | 5d | 2018-04-20 | 2018-04-26 | 167 | 6800d |  |  |
| 169 | 2.1.3.8 | develop filter | 9d | 2018-04-27 | 2018-05-10 | 168 | 7100d |  |  |
| 170 | 2.1.3.9 | implement filter | 5d | 2018-05-11 | 2018-05-17 | 169 | 7000d |  |  |
| 171 | 2.1.4 | **uts-ext** | 126d | 2018-02-09 | 2018-09-05 |  |  |  |  |
| 172 | 2.1.4.1 | provide initial performance metrics based on 2017 experience | 1d | 2018-02-09 | 2018-02-09 |  | 11100d |  |  |
| 173 | 2.1.4.2 | char-dev-dep | 58d | 2018-05-08 | 2018-07-26 |  | 5400d | as late as possible | emb engr 3 |
| 174 | 2.1.4.3 | develop filter | 23d | 2018-07-27 | 2018-08-28 | 173 |  | as late as possible | emb engr 3 |
| 175 | 2.1.4.4 | implement filter | 6d | 2018-08-29 | 2018-09-05 | 174 |  | as late as possible | emb engr 3 |
| 176 | 2.1.5 | **lidar-ext** | 126d | 2018-02-09 | 2018-09-05 |  |  |  |  |
| 177 | 2.1.5.1 | provide initial performance metrics based on 2017 experience | 1d | 2018-02-09 | 2018-02-09 |  | 11100d |  |  |
| 178 | 2.1.5.2 | char-dev-dep | 58d | 2018-05-08 | 2018-07-26 |  | 5400d | as late as possible | emb engr 4 |
| 179 | 2.1.5.3 | develop filter | 23d | 2018-07-27 | 2018-08-28 | 178 |  | as late as possible | emb engr 4 |
| 180 | 2.1.5.4 | implement filter | 6d | 2018-08-29 | 2018-09-05 | 179 |  | as late as possible | emb engr 4 |

Notes:
- 154: Fractional

| ID | WBS | Task | Duration | Start | Finish | Predecessors | Total slack | Constraint | Resources |
| --- | --- | --- | --- | --- | --- | --- | --- | --- | --- |
| 181 | 2.1.6 | **rain gauge** | 126d | 2018-02-09 | 2018-09-05 |  |  |  |  |
| 182 | 2.1.6.1 | provide initial performance metrics based on 2017 experience | 1d | 2018-02-09 | 2018-02-09 |  | 11100d |  |  |
| 183 | 2.1.6.2 | char-dev-dep | 26d | 2018-07-06 | 2018-08-10 |  | 9000d | as late as possible | emb engr 5 |
| 184 | 2.1.6.3 | develop filter | 13d | 2018-08-13 | 2018-08-29 | 183 |  | as late as possible | emb engr 5 |
| 185 | 2.1.6.4 | implement filter | 5d | 2018-08-30 | 2018-09-05 | 184 |  | as late as possible | emb engr 5 |
| 186 | 2.1.7 | **piezometer** | 126d | 2018-02-09 | 2018-09-05 |  |  |  |  |
| 187 | 2.1.7.1 | provide initial performance metrics based on 2017 experience | 1d | 2018-02-09 | 2018-02-09 |  | 11100d |  |  |
| 188 | 2.1.7.2 | char-dev-dep | 20d | 2018-07-24 | 2018-08-20 |  | 10000d | as late as possible | emb engr 6 |
| 189 | 2.1.7.3 | develop filter | 6d | 2018-08-21 | 2018-08-28 | 188 |  | as late as possible | emb engr 6 |
| 190 | 2.1.7.4 | implement filter | 6d | 2018-08-29 | 2018-09-05 | 189 |  | as late as possible | emb engr 6 |
| 191 | 2.1.8 | **gateway datalogger** | 111d | 2018-02-09 | 2018-08-09 |  | 100d |  |  |
| 192 | 2.1.8.1 | provide initial performance metrics based on 2017 experience | 1d | 2018-02-09 | 2018-02-09 |  | 11100d |  |  |
| 193 | 2.1.8.2 | char-dev-dep | 38d | 2018-06-19 | 2018-08-09 |  | 7900d | as late as possible | emb engr 7 |
| 194 | 2.1.9 | **router datalogger** | 126d | 2018-02-09 | 2018-09-05 |  |  |  |  |
| 195 | 2.1.9.1 | provide initial performance metrics based on 2017 experience | 1d | 2018-02-09 | 2018-02-09 |  | 11100d |  |  |
| 196 | 2.1.9.2 | char-dev-dep | 18d | 2018-08-13 | 2018-09-05 |  | 10900d | as late as possible | emb engr 7 |
| 197 | 2.1.10 | **sensor datalogger** | 47d | 2018-02-09 | 2018-04-30 |  | 7800d |  |  |
| 198 | 2.1.10.1 | provide initial performance metrics based on 2017 experience | 1d | 2018-02-09 | 2018-02-09 |  | 11100d |  |  |
| 199 | 2.1.10.2 | develop sensor datalogger feature 1( rtc, low-power, xbee interface, bluetooth interface) | 10d | 2018-02-09 | 2018-02-23 |  | 11600d |  |  |
| 200 | 2.1.10.3 | develop sensor datalogger feature 2( rtc, low-power, xbee interface, bluetooth interface) | 10d | 2018-02-09 | 2018-02-23 |  | 11600d |  |  |
| 201 | 2.1.10.4 | prepare manufacturing documents | 20d | 2018-02-09 | 2018-03-14 |  | 10700d |  |  |
| 202 | 2.1.10.5 | **manufacturing monitoring** | 47d | 2018-02-09 | 2018-04-30 |  | 7800d |  |  |
| 203 | 2.1.10.5.1 | develop functionality tests | 3d | 2018-02-09 | 2018-02-13 |  | 8100d |  |  |
| 204 | 2.1.10.5.2 | manufacture | 40d | 2018-02-14 | 2018-04-23 | 203 | 8000d |  |  |
| 205 | 2.1.10.5.3 | troubleshoot manufacturing issues | 40d | 2018-02-14 | 2018-04-23 | 203 | 8300d |  |  |
| 206 | 2.1.10.5.4 | evaluate sample boards | 5d | 2018-04-24 | 2018-04-30 | 204 | 7800d |  |  |

| ID | WBS | Task | Duration | Start | Finish | Predecessors | Total slack | Constraint | Resources |
| --- | --- | --- | --- | --- | --- | --- | --- | --- | --- |
| 207 | 2.1.11 | **stand alone datalogger** | 111d | 2018-02-09 | 2018-08-09 |  | 100d |  |  |
| 208 | 2.1.11.1 | provide initial performance metrics based on 2017 experience | 1d | 2018-02-09 | 2018-02-09 |  | 11100d |  |  |
| 209 | 2.1.11.2 | char-dev-dep | 20d | 2018-07-13 | 2018-08-09 |  | 9600d | as late as possible | emb engr 7 |
| 210 | 2.2 | **SMS parsing system for new data structures** | 17d | 2018-08-10 | 2018-09-05 |  |  |  |  |
| 211 | 2.2.1 | develop sms parsing system | 15d | 2018-08-10 | 2018-09-05 | 193, 209 | 200d | as late as possible |  |
| 212 | 2.3 | **Data storage and management system** | 33d | 2018-06-19 | 2018-08-10 |  |  |  |  |
| 213 | 2.3.1 | develop new structure for storage and management | 18d | 2018-06-19 | 2018-07-12 |  | 7700d | as late as possible | sys ad 1 |
| 214 | 2.3.2 | develop automated backup | 9d | 2018-07-24 | 2018-08-03 | 213 | 700d | as late as possible | sys ad 1 |
| 215 | 2.3.3 | recommend performance metrics | 5d | 2018-08-06 | 2018-08-10 | 214 |  | as late as possible | sys ad 1 |
| 216 | 2.3.4 | develop data access for risk assessment | 7d | 2018-07-13 | 2018-07-23 | 213 |  | as late as possible | sys ad 2 |
| 217 | 2.4 | **Data analysis system** | 126d? | 2018-02-09 | 2018-09-05 |  |  |  |  |
| 218 | 2.4.1 | **threshold scripts** | 1d | 2018-08-10 | 2018-08-10 |  |  |  |  |
| 219 | 2.4.1.1 | implement thresholds | 1d | 2018-08-10 | 2018-08-10 | 58, 66, 74, 82, 90, 98 |  | as late as possible | data scientist 7 |
| 220 | 2.4.2 | **visualization scripts** | 126d? | 2018-02-09 | 2018-09-05 |  |  |  |  |
| 221 | 2.4.2.1 | research data visualization concepts (inc. hazard concepts) | 10d | 2018-07-25 | 2018-08-10 |  | 10200d | as late as possible |  |
| 222 | 2.4.2.2 | develop new web charts | 18d | 2018-08-13 | 2018-09-05 | 219, 221 |  |  | eletech |
| 223 | 2.4.2.3 | improvement of existing web charts | 1d? | 2018-09-05 | 2018-09-05 |  | 12500d | as late as possible | full stack dev 2 |
| 224 | 2.4.2.4 | improvement of webchart generation | 1d? | 2018-09-05 | 2018-09-05 |  | 12500d | as late as possible | full stack dev 2 |
| 225 | 2.4.2.5 | provide initial performance metrics based on 2017 experience | 1d | 2018-02-09 | 2018-02-09 |  | 12500d |  | eletech |
| 226 | 2.4.3 | recommend performance metrics | 1d | 2018-08-10 | 2018-08-10 |  | 11100d | as late as possible | data scientist 7 |
| 227 | 2.4.4 | draft process profile (recomm to automation integration) | 2d | 2018-08-14 | 2018-08-15 |  | 11100d | as late as possible | data scientist 7 |
| 228 | 2.5 | **Dissemination system** | 126d? | 2018-02-09 | 2018-09-05 |  |  |  |  |
| 229 | 2.5.1 | **alert generation module** | 17d | 2018-08-10 | 2018-09-05 |  |  |  |  |
| 230 | 2.5.1.1 | create modularized infrastructure for different operational triggers | 5d | 2018-08-30 | 2018-09-05 |  | 12300d | as late as possible | programmer 1 |
| 231 | 2.5.1.2 | create "special cases" tables (e.g., Puguis) | 5d | 2018-08-28 | 2018-09-03 |  | 12100d | as late as possible | programmer 1 |
| 232 | 2.5.1.3 | implement alert protocol (trigger to alert) revisions | 2d | 2018-09-04 | 2018-09-05 | 141, 231 |  | as late as possible | programmer 1 |
| 233 | 2.5.1.4 | recommend performance metrics (in relation to automation) | 1d | 2018-08-10 | 2018-08-10 |  | 11100d | as late as possible | programmer 1 |
| 234 | 2.5.1.5 | draft process profile (recomm to automation integration) | 2d | 2018-08-14 | 2018-08-15 |  | 11100d | as late as possible | programmer 1 |

Notes:
- 212: fractional activity
- 217: each system should have a performance metrics document as its PI
- 222: for 6 new web charts developed under LRI
- 223: should include speed of generation of charts
- 224: fractional

| ID | WBS | Task | Duration | Start | Finish | Predecessors | Total slack | Constraint | Resources |
| --- | --- | --- | --- | --- | --- | --- | --- | --- | --- |
| 235 | 2.5.2 | **GSM module server** | 113d? | 2018-02-09 | 2018-08-15 |  | 1400d |  |  |
| 236 | 2.5.2.1 | **develop new GSM module server features** | 12d | 2018-02-09 | 2018-02-27 |  | 11200d |  |  |
| 237 | 2.5.2.1.1 | develop power autonomy | 13d | 2018-02-09 | 2018-02-27 |  | 9800d |  | emb engr 8 |
| 238 | 2.5.2.1.2 | develop multiple gsm module hardware | 13d | 2018-02-09 | 2018-02-27 |  | 11200d |  | emb engr 8 |
| 239 | 2.5.2.2 | implement new feature requests | 1d? | 2018-02-09 | 2018-02-09 |  | 12500d |  | emb engr 8 |
| 240 | 2.5.2.3 | recommend performance metrics (in relation to automation) | 1d | 2018-08-10 | 2018-08-10 |  | 11100d | as late as possible | emb engr 8 |
| 241 | 2.5.2.4 | draft process profile (recomm to automation integration) | 2d | 2018-08-14 | 2018-08-15 |  | 11100d | as late as possible | emb engr 8 |
| 242 | 2.5.3 | **chatterbox** | 17d? | 2018-08-10 | 2018-09-05 |  |  |  |  |
| 243 | 2.5.3.1 | revise scripts for SMS generation and sending (automation?) | 6d | 2018-08-29 | 2018-09-05 |  | 12100d | as late as possible | full stack dev 3 |
| 244 | 2.5.3.2 | implement feature requests | 1d? | 2018-09-05 | 2018-09-05 |  | 12500d | as late as possible | full stack dev 3 |
| 245 | 2.5.3.3 | improve performance | 1d? | 2018-09-05 | 2018-09-05 |  | 12500d | as late as possible | full stack dev 3 |
| 246 | 2.5.3.4 | recommend performance metrics (in relation to automation) | 1d | 2018-08-10 | 2018-08-10 |  | 11100d | as late as possible | full stack dev 3 |
| 247 | 2.5.3.5 | draft process profile (recomm to automation integration) | 2d | 2018-08-14 | 2018-08-15 |  | 11100d | as late as possible | full stack dev 3 |
| 248 | 2.5.4 | **webcall** | 49d | 2018-05-29 | 2018-08-15 |  |  |  |  |
| 249 | 2.5.4.1 | acquire, implement hardware | 37d | 2018-05-29 | 2018-07-18 |  | 6600d | as late as possible | full stack dev 4 |
| 250 | 2.5.4.2 | develop/integrate software | 16d | 2018-07-19 | 2018-08-09 | 249 |  | as late as possible | full stack dev 4 |
| 251 | 2.5.4.3 | recommend performance metrics (in relation to automation) | 1d | 2018-08-10 | 2018-08-10 | 250 |  | as late as possible | full stack dev 4 |
| 252 | 2.5.4.4 | draft process profile (recomm to automation integration) | 2d | 2018-08-14 | 2018-08-15 | 251 | 100d | as late as possible | full stack dev 4 |
| 253 | 2.5.5 | **bulletin generator** | 126d? | 2018-02-09 | 2018-09-05 |  |  |  |  |
| 254 | 2.5.5.1 | revise scripts for bulletin generation and sending (automation?) | 5d | 2018-08-30 | 2018-09-05 |  | 12300d | as late as possible |  |
| 255 | 2.5.5.2 | implement feature requests | 1d? | 2018-02-09 | 2018-02-09 |  | 12500d |  |  |
| 256 | 2.5.5.3 | improve performance | 1d? | 2018-09-05 | 2018-09-05 |  | 12500d | as late as possible |  |
| 257 | 2.5.5.4 | recommend performance metrics (in relation to automation) | 1d | 2018-08-10 | 2018-08-10 |  | 11100d | as late as possible |  |
| 258 | 2.5.5.5 | draft process profile (recomm to automation integration) | 2d | 2018-08-14 | 2018-08-15 |  | 11100d | as late as possible |  |

Notes:
- 239: Agile / Fractional
- 244: Fractional (Agile)
- 245: Agile
- 249: Acquisition of hardware will take some time
- 255: Agile (Fractional)
- 256: Agile (Fractional)

| ID | WBS | Task | Duration | Start | Finish | Predecessors | Total slack | Constraint | Resources |
| --- | --- | --- | --- | --- | --- | --- | --- | --- | --- |
| 259 | 2.6 | **Local Info system (ISD)** | 72d | 2018-05-14 | 2018-09-05 |  |  |  |  |
| 260 | 2.6.1 | consolidate recommendations into ict specifications | 7d | 2018-05-14 | 2018-05-22 |  | 5400d | as late as possible | analyst 1 |
| 261 | 2.6.2 | use case testing | 38d | 2018-07-16 | 2018-09-05 | 260 | 3300d | as late as possible | analyst 1 |
| 262 | 2.6.3 | develop local codes updating system | 15d | 2018-08-16 | 2018-09-05 | 260 | 5100d | as late as possible | programmer 2 |
| 263 | 2.6.4 | port ews-l modules | 76d | 2018-05-23 | 2018-09-05 | 260 |  | as late as possible | programmer 2 |
| 264 | 2.7 | **Automation integration system** | 126d | 2018-02-09 | 2018-09-05 |  |  |  |  |
| 265 | 2.7.1 | automate recommended processes | 15d | 2018-08-16 | 2018-09-05 | 227, 234, 241, 247, 252, 258 |  | as late as possible | programmer 3 |
| 266 | 2.7.2 | recommend performance metrics | 2d | 2018-02-09 | 2018-02-12 |  | 10900d |  | programmer 3 |
| 267 | 2.8 | **Performance monitoring system of central system** | 126d? | 2018-02-09 | 2018-09-05 |  |  |  |  |
| 268 | 2.8.1 | consolidate recommendations for performance metrics | 1d? | 2018-08-13 | 2018-08-13 | 145, 149, 162, 172, 177, 182, 187, 192, 195, 198, 208, 215, 226, 233, 237, 240, 246, 251, 257, 266 |  | as late as possible | MEAL officer 1 |
| 269 | 2.8.2 | develop performance targets | 1d? | 2018-02-09 | 2018-02-09 |  | 12500d |  |  |
| 270 | 2.8.3 | **Performance monitoring system** | 13d? | 2018-08-14 | 2018-09-05 |  |  |  |  |
| 271 | 2.8.3.1 | develop PMS backbone stable version | 12d | 2018-08-14 | 2018-08-29 | 268 |  |  | programmer 4 |
| 272 | 2.8.3.2 | maintain PMS | 1d? | 2018-08-30 | 2018-08-30 | 271 | 400d |  |  |
| 273 | 2.8.3.3 | develop agile PMS components | 1d? | 2018-08-30 | 2018-08-30 | 271 | 400d |  |  |
| 274 | 2.8.3.4 | develop generic visualization charts | 5d | 2018-08-30 | 2018-09-05 | 271 |  |  |  |
| 275 | 2.8.4 | establish baseline | 1d? | 2018-02-09 | 2018-02-09 |  | 12500d |  |  |
| 276 | 2.9 | **Organized Local Early Warning Committee (LEWC)** | 44d | 2018-06-25 | 2018-09-05 |  |  |  |  |
| 277 | 2.9.1 | **LEWC org structure and mission/vision (47 sites)** | 42d | 2018-06-26 | 2018-09-05 |  |  |  |  |
| 278 | 2.9.1.1 | prepare modules | 14d | 2018-06-26 | 2018-07-13 |  | 8000d | as late as possible | comm dev 1 |
| 279 | 2.9.1.2 | conduct training/ gather data | 38d | 2018-07-16 | 2018-09-05 | 278 |  | as late as possible | facilitator 1 |
| 280 | 2.9.2 | **Guidelines for community organizing (2 sites)** | 44d | 2018-06-25 | 2018-09-05 |  |  |  |  |
| 281 | 2.9.2.1 | develop methods for community organizing | 30d | 2018-06-25 | 2018-08-03 |  | 8200d | as late as possible | comm dev 2 |
| 282 | 2.9.2.2 | gather data (fieldwork) | 12d | 2018-08-06 | 2018-08-21 | 281 |  | as late as possible | facilitator 2 |
| 283 | 2.9.2.3 | recommend activities for community organizing | 11d | 2018-08-22 | 2018-09-05 | 282 |  | as late as possible | comm dev 2 |

Notes:
- 263: Define duration and number of resources after the ICT report
- 271: PI: should be able to produce a report, either on-demand or periodically
- 272: fractional
- 273: fractional
- 277: (focus sites)

| ID | WBS | Task | Duration | Start | Finish | Predecessors | Total slack | Constraint | Resources |
| --- | --- | --- | --- | --- | --- | --- | --- | --- | --- |
| 284 | 2.9.3 | **develop guidelines for institutionalization of LEWC (2 sites)** | 44d | 2018-06-25 | 2018-09-05 |  |  |  |  |
| 285 | 2.9.3.1 | develop methods for crafing guidelines | 30d | 2018-06-25 | 2018-08-03 |  | 8200d | as late as possible | comm dev 3 |
| 286 | 2.9.3.2 | gather data (fieldwork) | 12d | 2018-08-06 | 2018-08-21 | 285 |  | as late as possible | facilitator 3 |
| 287 | 2.9.3.3 | develop guidelines for institutionalization of LEWC | 11d | 2018-08-22 | 2018-09-05 | 286 |  | as late as possible | comm dev 3 |
| 288 | 2.10 | **Guidelines for developing contingency plans for DSL (barangay level)** | 32d | 2018-07-18 | 2018-09-05 |  |  |  |  |
| 289 | 2.10.1 | review literature on contingency plans | 26d | 2018-07-18 | 2018-08-22 |  | 9600d | as late as possible | social scientist 3 |
| 290 | 2.10.2 | draft guidelines for contingency plans | 5d | 2018-08-23 | 2018-08-29 | 289 |  | as late as possible | social scientist 3 |
| 291 | 2.10.3 | approve guidelines for contingency plans | 5d | 2018-08-30 | 2018-09-05 | 290 |  | as late as possible | social scientist 3 |
| 292 | 2.11 | **Operations manual** | 10d | 2018-08-22 | 2018-09-05 |  |  |  |  |
| 293 | 2.11.1 | update EWS operations manual (1) | 4d | 2018-08-22 | 2018-08-27 | 141 |  | as late as possible | DRRS 2 |
| 294 | 2.11.2 | update EWS operations manual (2) | 4d | 2018-08-28 | 2018-08-31 | 141, 293 |  |  | DRRS 2 |
| 295 | 2.11.3 | update EWS operations manual (3) | 3d | 2018-09-03 | 2018-09-05 | 141, 294 |  |  | DRRS 2 |
| 296 | 3 | **Early warning information** | 126d? | 2018-02-09 | 2018-09-05 |  |  |  |  |
| 297 | 3.1 | generate, review, and release EWI | 1d? | 2018-09-05 | 2018-09-05 |  | 12500d | as late as possible | monitoringPersonnel40+ |
| 298 | 3.2 | **EWI support** | 126d? | 2018-02-09 | 2018-09-05 |  |  |  |  |
| 299 | 3.2.1 | **operational systems** | 1d? | 2018-09-05 | 2018-09-05 |  |  |  |  |
| 300 | 3.2.1.1 | **sensors and dataloggers** | 1d? | 2018-09-05 | 2018-09-05 |  |  |  |  |
| 301 | 3.2.1.1.1 | replace defective sensors and loggers | 1d? | 2018-09-05 | 2018-09-05 |  | 12500d | as late as possible | eletech 1 |
| 302 | 3.2.1.1.2 | monitor sensor and datalogger health status | 1d? | 2018-09-05 | 2018-09-05 |  | 12500d | as late as possible | emb engr 8 |
| 303 | 3.2.1.1.3 | track maintenance activities | 1d? | 2018-09-05 | 2018-09-05 |  | 12500d | as late as possible | emb engr 8 |
| 304 | 3.2.1.1.4 | manage inventory | 1d? | 2018-09-05 | 2018-09-05 |  | 12500d | as late as possible | eletech 2 |
| 305 | 3.2.1.1.5 | track PLAA events | 1d? | 2018-09-05 | 2018-09-05 |  | 12500d | as late as possible | emb engr 8 |
| 306 | 3.2.1.1.6 | track sensor events | 1d? | 2018-09-05 | 2018-09-05 |  | 12500d | as late as possible | emb engr 8 |
| 307 | 3.2.1.1.7 | field-based maintenance | 1d? | 2018-09-05 | 2018-09-05 |  | 12500d | as late as possible | eletech 3 |

Notes:
- 288: ilan bang sites?
- 292: may dependency sa MEAL results (habang hindi pa fully defined ang MEAL) consider an "about the project" document as dependency
- 297: fractional work, will vary per staff
- 299: fractional work for all activities under this
- 301: includes drilling and deployment; (may be include also procurement of drilling services?)

| ID | WBS | Task | Duration | Start | Finish | Predecessors | Total slack | Constraint | Resources |
| --- | --- | --- | --- | --- | --- | --- | --- | --- | --- |
| 308 | 3.2.1.2 | **central server (software)** | 1d? | 2018-09-05 | 2018-09-05 |  |  |  |  |
| 309 | 3.2.1.2.1 | maintain data gathering system | 1d? | 2018-09-05 | 2018-09-05 |  | 12500d | as late as possible |  |
| 310 | 3.2.1.2.2 | maintain data storage and management system | 1d? | 2018-09-05 | 2018-09-05 |  | 12500d | as late as possible |  |
| 311 | 3.2.1.2.3 | maintain data analysis system | 1d? | 2018-09-05 | 2018-09-05 |  | 12500d | as late as possible |  |
| 312 | 3.2.1.2.4 | maintain info dissemination system | 1d? | 2018-09-05 | 2018-09-05 |  | 12500d | as late as possible |  |
| 313 | 3.2.1.2.5 | train staff for debugging | 0.5d? | 2018-09-05 | 2018-09-05 |  | 12550d | as late as possible |  |
| 314 | 3.2.1.2.6 | produce code and documentation standards | 1d? | 2018-09-05 | 2018-09-05 |  | 12500d | as late as possible |  |
| 315 | 3.2.2 | **updated database** | 1d? | 2018-09-05 | 2018-09-05 |  |  |  |  |
| 316 | 3.2.2.1 | maintain tables | 1d? | 2018-09-05 | 2018-09-05 |  | 12500d | as late as possible |  |
| 317 | 3.2.3 | **parsed SMS** | 1d? | 2018-09-05 | 2018-09-05 |  |  |  |  |
| 318 | 3.2.3.1 | maintain SMS parsing | 1d? | 2018-09-05 | 2018-09-05 |  | 12500d | as late as possible |  |
| 319 | 3.2.4 | **capable personnel for monitoring and early warning** | 126d? | 2018-02-09 | 2018-09-05 |  |  |  |  |
| 320 | 3.2.4.1 | **develop training materials** | 19d? | 2018-08-08 | 2018-09-04 |  |  |  |  |
| 321 | 3.2.4.1.1 | hazard monitoring | 20d | 2018-08-08 | 2018-09-04 |  | 11000d | as late as possible | training specialist 1 |
| 322 | 3.2.4.1.2 | analysis and validation | 20d | 2018-08-08 | 2018-09-04 |  | 11000d | as late as possible | training specialist 1 |
| 323 | 3.2.4.1.3 | sensor maintenance | 1d? | 2018-09-04 | 2018-09-04 |  | 12400d | as late as possible | eletech 5 |
| 324 | 3.2.4.1.4 | communications protocol | 20d | 2018-08-08 | 2018-09-04 |  | 11000d | as late as possible | training specialist 1 |
| 325 | 3.2.4.2 | **conduct EWS protocol trainings (internal)** | 1d? | 2018-09-05 | 2018-09-05 |  |  |  |  |
| 326 | 3.2.4.2.1 | hazard monitoring | 1d | 2018-09-05 | 2018-09-05 | 321 |  | as late as possible | geotech 1 |
| 327 | 3.2.4.2.2 | analysis and validation | 1d | 2018-09-05 | 2018-09-05 | 322 |  | as late as possible | data scientist 7 |
| 328 | 3.2.4.2.3 | sensor maintenance | 1d? | 2018-09-05 | 2018-09-05 | 323 |  | as late as possible | eletech 5 |
| 329 | 3.2.4.2.4 | communications protocol | 1d | 2018-09-05 | 2018-09-05 | 324 |  | as late as possible | DRRS 2 |
| 330 | 3.2.4.3 | **conduct EWS protocol trainings (external)** | 126d? | 2018-02-09 | 2018-09-05 |  |  |  |  |
| 331 | 3.2.4.3.1 | combo training 1 (hazard monitoring, analysis, comm protocol) | 8d | 2018-02-09 | 2018-02-21 |  | 11900d |  | training specialist 1; training specialist 2; training specialist 4 |
| 332 | 3.2.4.3.2 | combo training 2 (hazard monitoring, analysis, comm protocol) | 8d | 2018-02-09 | 2018-02-21 |  | 11900d |  | training specialist 1; training specialist 2; training specialist 4 |
| 333 | 3.2.4.3.3 | combo training 3 (hazard monitoring, analysis, comm protocol) | 8d | 2018-02-09 | 2018-02-21 |  | 11900d |  | training specialist 1; training specialist 2; training specialist 4 |
| 334 | 3.2.4.3.4 | combo training n (hazard monitoring, analysis, comm protocol) | 8d | 2018-02-09 | 2018-02-21 |  | 11900d |  | training specialist 1; training specialist 2; training specialist 4 |
| 335 | 3.2.4.3.5 | sensor maintenance | 1d? | 2018-09-05 | 2018-09-05 |  | 12500d | as late as possible | training specialist 3 |

Notes:
- 313: for purpose of pool of debuggers
- 315: fractional work
- 317: Fractional work
- 323: fractional work
- 325: will involve some, if not all of project staff, as participants in training; proposal: express this as fractional work included in monitoring
- 328: fractional work
- 331: assume duration accounts for cluster of 2-3 sites
- 332: assume duration accounts for cluster of 2-3 sites
- 333: assume duration accounts for cluster of 2-3 sites
- 334: assume duration accounts for cluster of 2-3 sites
- 335: fractional work

| ID | WBS | Task | Duration | Start | Finish | Predecessors | Total slack | Constraint | Resources |
| --- | --- | --- | --- | --- | --- | --- | --- | --- | --- |
| 336 | 4 | **Strategic communications** | 13d? | 2018-08-14 | 2018-09-05 |  |  |  |  |
| 337 | 4.1 | research stakeholder info needs | 1d? | 2018-08-14 | 2018-08-14 |  | 11100d | as late as possible | comm res 1 |
| 338 | 4.2 | research policy process | 1d? | 2018-09-05 | 2018-09-05 |  | 12500d | as late as possible | comm res 2 |
| 339 | 4.3 | develop strategic comm plan | 1d? | 2018-08-15 | 2018-08-15 | 337 |  | as late as possible | comm res 1 |
| 340 | 4.4 | **develop communication materials** | 14d? | 2018-08-16 | 2018-09-05 | 339 |  |  |  |
| 341 | 4.4.1 | **website** | 14d? | 2018-08-16 | 2018-09-05 |  |  |  |  |
| 342 | 4.4.1.1 | develop website content | 1d? | 2018-08-16 | 2018-08-16 |  |  | as late as possible | comm res 1 |
| 343 | 4.4.1.2 | design website | 1d? | 2018-08-17 | 2018-08-17 | 342 |  | as late as possible | comm res 1 |
| 344 | 4.4.1.3 | develop content management system (core) | 13d | 2018-08-20 | 2018-09-05 | 343 |  | as late as possible | full stack dev 1 |
| 345 | 4.5 | develop non-website communications | 1d? | 2018-09-05 | 2018-09-05 |  | 12500d | as late as possible | comm res 2 |
| 346 | 5 | **MEAL system** | 126d? | 2018-02-09 | 2018-09-05 |  |  |  |  |
| 347 | 5.1 | sourcing of MEAL expert | 8d | 2018-02-09 | 2018-02-20 |  | 2700d |  | MEAL officer 1 |
| 348 | 5.2 | develop MEAL framework | 2d | 2018-04-12 | 2018-04-13 | 347 | 2700d | as late as possible | MEAL expert; MEAL officer 1; MEAL officer 2; MEAL officer 3; MEAL officer 4; MEAL officer 5; MEAL officer 6 |
| 349 | 5.3 | develop MEAL plan | 4d | 2018-04-16 | 2018-04-19 | 348 |  | as late as possible | MEAL expert; MEAL officer 1; MEAL officer 2; MEAL officer 3; MEAL officer 4; MEAL officer 5; MEAL officer 6 |
| 350 | 5.4 | conduct training needs analysis | 1d | 2018-04-20 | 2018-04-20 | 349 | 8300d |  |  |
| 351 | 5.5 | develop training plan | 2d | 2018-04-23 | 2018-04-24 | 350 | 8100d |  |  |
| 352 | 5.6 | **monitoring mechanisms** | 126d | 2018-02-09 | 2018-09-05 |  |  |  |  |
| 353 | 5.6.1 | **standard documentation and storage** | 4d | 2018-08-28 | 2018-09-05 |  |  |  |  |
| 354 | 5.6.1.1 | design documentation templates and organization/structure | 5d | 2018-08-28 | 2018-09-03 | 349 | 8000d | as late as possible | MEAL officer 1; MEAL officer 2; MEAL officer 3; MEAL officer 4; MEAL officer 5; MEAL officer 6 |
| 355 | 5.6.1.2 | design repository system | 2d | 2018-09-04 | 2018-09-05 | 354 |  | as late as possible | programmer 1 |
| 356 | 5.6.2 | **PLAA** | 3d | 2018-09-03 | 2018-09-05 |  |  |  |  |
| 357 | 5.6.2.1 | review current PLAA vis-a-vis MEAL plan | 2d | 2018-09-03 | 2018-09-04 | 349 | 8200d | as late as possible | MEAL officer 1; MEAL staff 1; MEAL staff 2 |
| 358 | 5.6.2.2 | revise PLAA guidelines | 1d | 2018-09-05 | 2018-09-05 | 357 |  | as late as possible | MEAL officer 1; MEAL staff 1; MEAL staff 2 |
| 359 | 5.6.3 | **EWS-QA** | 126d | 2018-02-09 | 2018-09-05 |  |  |  |  |
| 360 | 5.6.3.1 | review current EWS-QA vis-a-vis MEAL plan | 2d | 2018-09-03 | 2018-09-04 | 349 | 8200d | as late as possible | MEAL officer 2; MEAL staff 3; MEAL staff 4 |
| 361 | 5.6.3.2 | revise EWS-QA guidelines | 1d | 2018-09-05 | 2018-09-05 | 360 |  | as late as possible | MEAL officer 2; MEAL staff 3; MEAL staff 4 |
| 362 | 5.6.3.3 | revise tools for data gathering | 2d | 2018-02-09 | 2018-02-12 |  | 12300d |  | programmer 2 |

Notes:
- 355: google drive (free account) as main repo; task involves mainly the set-up of the account, permissions, etc...

| ID | WBS | Task | Duration | Start | Finish | Predecessors | Total slack | Constraint | Resources |
| --- | --- | --- | --- | --- | --- | --- | --- | --- | --- |
| 363 | 5.6.4 | **outcome-impact** | 3d | 2018-09-03 | 2018-09-05 |  |  |  |  |
| 364 | 5.6.4.1 | review outcome-impact vis-a-vis MEAL plan | 2d | 2018-09-03 | 2018-09-04 | 349 | 8200d | as late as possible | MEAL officer 3; MEAL staff 5; MEAL staff 6 |
| 365 | 5.6.4.2 | revise outcome-impact | 1d | 2018-09-05 | 2018-09-05 | 364 |  | as late as possible | MEAL officer 3; MEAL staff 5; MEAL staff 6 |
| 366 | 5.6.5 | **administrative process** | 3d | 2018-09-03 | 2018-09-05 |  |  |  |  |
| 367 | 5.6.5.1 | review admin process trackers vis-a-vis MEAL plan | 2d | 2018-09-03 | 2018-09-04 | 349 | 8200d | as late as possible | MEAL officer 4; MEAL staff 7; MEAL staff 8 |
| 368 | 5.6.5.2 | revise admin process trackers | 1d | 2018-09-05 | 2018-09-05 | 367 |  | as late as possible | MEAL officer 4; MEAL staff 7; MEAL staff 8 |
| 369 | 5.6.6 | **project output** | 3d | 2018-09-03 | 2018-09-05 |  |  |  |  |
| 370 | 5.6.6.1 | develop team output tracker | 1d | 2018-09-03 | 2018-09-03 | 349 | 8300d | as late as possible | MEAL officer 5; MEAL staff 10; MEAL staff 9 |
| 371 | 5.6.6.2 | develop individual output tracker | 1d | 2018-09-04 | 2018-09-04 | 349, 370 |  | as late as possible | MEAL officer 5; MEAL staff 10; MEAL staff 9 |
| 372 | 5.6.6.3 | develop individual capacity tracker | 1d | 2018-09-05 | 2018-09-05 | 349, 371 |  | as late as possible | MEAL officer 5; MEAL staff 10; MEAL staff 9 |
| 373 | 5.6.7 | **stakeholder concerns** | 0.5d | 2018-09-05 | 2018-09-05 |  |  |  |  |
| 374 | 5.6.7.1 | develop stakeholder concerns tracker | 0.5d | 2018-09-05 | 2018-09-05 | 349 | 8550d | as late as possible | MEAL officer 3; MEAL staff 5; MEAL staff 6 |
| 375 | 5.7 | **MEAL implem** | 86d? | 2018-04-20 | 2018-09-05 |  |  |  |  |
| 376 | 5.7.1 | **EWS-QA** | 1d | 2018-04-20 | 2018-04-20 | 349 | 8500d |  |  |
| 377 | 5.7.1.1 | **bimonthly** | 1d | 2018-04-20 | 2018-04-20 |  | 8500d |  |  |
| 378 | 5.7.1.1.1 | gather, analyze, evaluate data | 1d | 2018-04-20 | 2018-04-20 |  | 8500d |  | MEAL officer 2; MEAL staff 3; MEAL staff 4 |
| 379 | 5.7.1.1.2 | prepare for presentation (feedback sessions) | 0d | 2018-04-20 | 2018-04-20 | 378 | 8500d |  | MEAL officer 2; MEAL staff 3; MEAL staff 4 |
| 380 | 5.7.1.2 | **quarterly** | 1d | 2018-04-20 | 2018-04-20 |  | 8500d |  |  |
| 381 | 5.7.1.2.1 | gather, analyze, evaluate data | 1d | 2018-04-20 | 2018-04-20 |  | 8500d |  | MEAL officer 2; MEAL staff 3; MEAL staff 4 |
| 382 | 5.7.1.2.2 | prepare for presentation (feedback sessions) | 0d | 2018-04-20 | 2018-04-20 | 381 | 8500d |  | MEAL officer 2; MEAL staff 3; MEAL staff 4 |
| 383 | 5.7.1.3 | **annual** | 1d | 2018-04-20 | 2018-04-20 |  | 8500d |  |  |
| 384 | 5.7.1.3.1 | gather, analyze, evaluate data | 1d | 2018-04-20 | 2018-04-20 |  | 8500d |  | MEAL officer 2; MEAL staff 3; MEAL staff 4 |
| 385 | 5.7.1.3.2 | prepare for presentation (feedback sessions) | 0d | 2018-04-20 | 2018-04-20 | 384 | 8500d |  | MEAL officer 2; MEAL staff 3; MEAL staff 4 |
| 386 | 5.7.2 | **PLAA** | 86d? | 2018-04-20 | 2018-09-05 | 349 |  |  |  |
| 387 | 5.7.2.1 | **site 1** | 14d | 2018-04-20 | 2018-05-14 |  |  |  |  |
| 388 | 5.7.2.1.1 | conduct sensor fieldwork - write report | 7d | 2018-04-20 | 2018-04-30 |  | 500d |  | eletech 1; eletech 2 |
| 389 | 5.7.2.1.2 | conduct landslide fieldwork - write report | 13d | 2018-04-20 | 2018-05-09 |  |  |  | geol 1; geotech 1 |
| 390 | 5.7.2.1.3 | conduct community fieldwork - write report | 13d | 2018-04-20 | 2018-05-09 |  |  |  | social scientist 1; social scientist 2 |
| 391 | 5.7.2.1.4 | review | 3d | 2018-05-10 | 2018-05-14 | 388, 389, 390 |  |  | MEAL officer 1; MEAL staff 1; MEAL staff 2 |

Notes:
- 377: QA feedback session should be incorporated in main monitoring work, also as fractional work
- 386: mas ipwesto ang karamihan ng PLAA sa 2nd half
- 391: kelangan ilinaw ang scope ng review

| ID | WBS | Task | Duration | Start | Finish | Predecessors | Total slack | Resources |
| --- | --- | --- | --- | --- | --- | --- | --- | --- |
| 392 | 5.7.2.2 | **site 2** | 15d | 2018-05-15 | 2018-06-04 | 387 |  |  |
| 393 | 5.7.2.2.1 | conduct sensor fieldwork - write report | 5d | 2018-05-15 | 2018-05-21 |  | 700d | eletech 1; eletech 2 |
| 394 | 5.7.2.2.2 | conduct landslide fieldwork - write report | 12d | 2018-05-15 | 2018-05-30 |  |  | geol 1; geotech 1 |
| 395 | 5.7.2.2.3 | conduct community fieldwork - write report | 12d | 2018-05-15 | 2018-05-30 |  |  | social scientist 1; social scientist 2 |
| 396 | 5.7.2.2.4 | review | 3d | 2018-05-31 | 2018-06-04 | 393, 394, 395 |  | MEAL officer 1; MEAL staff 1; MEAL staff 2 |
| 397 | 5.7.2.3 | **site 3** | 16d | 2018-06-05 | 2018-06-26 | 392 |  |  |
| 398 | 5.7.2.3.1 | conduct sensor fieldwork - write report | 7d | 2018-06-05 | 2018-06-13 |  | 600d | eletech 1; eletech 2 |
| 399 | 5.7.2.3.2 | conduct landslide fieldwork - write report | 13d | 2018-06-05 | 2018-06-21 |  |  | geol 1; geotech 1 |
| 400 | 5.7.2.3.3 | conduct community fieldwork - write report | 13d | 2018-06-05 | 2018-06-21 |  |  | social scientist 1; social scientist 2 |
| 401 | 5.7.2.3.4 | review | 3d | 2018-06-22 | 2018-06-26 | 398, 399, 400 |  | MEAL officer 1; MEAL staff 1; MEAL staff 2 |
| 402 | 5.7.2.4 | **site 4** | 12d | 2018-06-27 | 2018-07-17 | 397 |  |  |
| 403 | 5.7.2.4.1 | conduct sensor fieldwork - write report | 5d | 2018-06-27 | 2018-07-06 |  | 400d | eletech 1; eletech 2 |
| 404 | 5.7.2.4.2 | conduct landslide fieldwork - write report | 9d | 2018-06-27 | 2018-07-12 |  |  | geol 1; geotech 1 |
| 405 | 5.7.2.4.3 | conduct community fieldwork - write report | 9d | 2018-06-27 | 2018-07-12 |  |  | social scientist 1; social scientist 2 |
| 406 | 5.7.2.4.4 | review | 3d | 2018-07-13 | 2018-07-17 | 403, 404, 405 |  | MEAL officer 1; MEAL staff 1; MEAL staff 2 |
| 407 | 5.7.2.5 | **site 5** | 15d | 2018-07-18 | 2018-08-10 | 402 |  |  |
| 408 | 5.7.2.5.1 | conduct sensor fieldwork - write report | 8d | 2018-07-18 | 2018-07-27 |  | 600d | eletech 1; eletech 2 |
| 409 | 5.7.2.5.2 | conduct landslide fieldwork - write report | 15d | 2018-07-18 | 2018-08-07 |  |  | geol 1; geotech 1 |
| 410 | 5.7.2.5.3 | conduct community fieldwork - write report | 15d | 2018-07-18 | 2018-08-07 |  |  | social scientist 1; social scientist 2 |
| 411 | 5.7.2.5.4 | review | 3d | 2018-08-08 | 2018-08-10 | 409, 408, 410 |  | MEAL officer 1; MEAL staff 1; MEAL staff 2 |
| 412 | 5.7.2.6 | **site 6** | 15d | 2018-08-13 | 2018-09-05 | 407 |  |  |
| 413 | 5.7.2.6.1 | conduct sensor fieldwork - write report | 8d | 2018-08-13 | 2018-08-22 |  | 600d | eletech 1; eletech 2 |
| 414 | 5.7.2.6.2 | conduct landslide fieldwork - write report | 14d | 2018-08-13 | 2018-08-31 |  |  | geol 1; geotech 1 |
| 415 | 5.7.2.6.3 | conduct community fieldwork - write report | 14d | 2018-08-13 | 2018-08-31 |  |  | social scientist 1; social scientist 2 |
| 416 | 5.7.2.6.4 | review | 3d | 2018-09-03 | 2018-09-05 | 414, 413, 415 |  | MEAL officer 1; MEAL staff 1; MEAL staff 2 |
| 417 | 5.7.2.7 | synthesis (across sites) | 1d? | 2018-04-20 | 2018-04-20 |  | 8500d |  |

Notes:
- 396: kelangan ilinaw ang scope ng review
- 401: kelangan ilinaw ang scope ng review
- 406: kelangan ilinaw ang scope ng review
- 411: kelangan ilinaw ang scope ng review
- 416: kelangan ilinaw ang scope ng review

| ID | WBS | Task | Duration | Start | Finish | Predecessors | Total slack |
| --- | --- | --- | --- | --- | --- | --- | --- |
| 418 | 5.7.3 | **outcome-impact** | 1d? | 2018-04-20 | 2018-04-20 | 349 | 8500d |
| 419 | 5.7.3.1 | **activity series 1** | 1d? | 2018-04-20 | 2018-04-20 |  | 8500d |
| 420 | 5.7.3.1.1 | gather data | 1d? | 2018-04-20 | 2018-04-20 |  | 8500d |
| 421 | 5.7.3.1.2 | analyze, evaluate data | 1d? | 2018-04-20 | 2018-04-20 |  | 8500d |
| 422 | 5.7.3.1.3 | provide recommendations | 1d? | 2018-04-20 | 2018-04-20 |  | 8500d |
| 423 | 5.7.4 | **project output** | 1d? | 2018-04-20 | 2018-04-20 | 349 | 8500d |
| 424 | 5.7.4.1 | **activity series 1** | 1d? | 2018-04-20 | 2018-04-20 |  | 8500d |
| 425 | 5.7.4.1.1 | gather data | 1d? | 2018-04-20 | 2018-04-20 |  | 8500d |
| 426 | 5.7.4.1.2 | analyze, evaluate data | 1d? | 2018-04-20 | 2018-04-20 |  | 8500d |
| 427 | 5.7.4.1.3 | provide recommendations | 1d? | 2018-04-20 | 2018-04-20 |  | 8500d |
| 428 | 5.7.5 | **stakeholder concerns** | 1d? | 2018-04-20 | 2018-04-20 | 349 | 8500d |
| 429 | 5.7.5.1 | **activity series 1** | 1d? | 2018-04-20 | 2018-04-20 |  | 8500d |
| 430 | 5.7.5.1.1 | gather data | 1d? | 2018-04-20 | 2018-04-20 |  | 8500d |
| 431 | 5.7.5.1.2 | analyze, evaluate data | 1d? | 2018-04-20 | 2018-04-20 |  | 8500d |
| 432 | 5.7.5.1.3 | provide recommendations | 1d? | 2018-04-20 | 2018-04-20 |  | 8500d |
| 433 | 5.7.6 | **admin process** | 1d? | 2018-04-20 | 2018-04-20 | 349 | 8500d |
| 434 | 5.7.6.1 | **activity series 1** | 1d? | 2018-04-20 | 2018-04-20 |  | 8500d |
| 435 | 5.7.6.1.1 | gather data | 1d? | 2018-04-20 | 2018-04-20 |  | 8500d |
| 436 | 5.7.6.1.2 | analyze, evaluate data | 1d? | 2018-04-20 | 2018-04-20 |  | 8500d |
| 437 | 5.7.6.1.3 | provide recommendations | 1d? | 2018-04-20 | 2018-04-20 |  | 8500d |
